Schedule from MS Project XML, 2013-07-22 to 2013-11-27, costs in $, A marks actual dates.

## Calendars

- Estándar: Mon-Fri 08:00-12:00, 13:00-17:00; Sat-Sun off.

## Resources

| Resource | Group | Rate |
| --- | --- | --- |
| No Asignado |  |  |
| Baulde Miguel | Supervisor | 100 |
| Buenaventura Claudio | Mecanico | 73 |
| Geoerbiguer | Mecanico | 73 |
| Abbadie Alfredo | Mecanico | 30 |
| Lepore Alfredo | Mecanico | 30 |
| Grifithes Hugo | Mecanico | 30 |
| Bertelli Sebstian | Instrumentista | 30 |
| Lugones Lucas | Ayudante | 19 |
| Pedersen Gaspar | Medio oficial | 22 |
| Alonso Gastón | Mecánica | 10 |
| Lopez Diego |  | 10 |
| Quinteros |  | 10 |
| Marchesan Mariano |  | 10 |
| Pollet Daniel | Mecánica | 10 |
| Belitskyy Volodimyr | Mecánica | 10 |
| + |  | 10 |
| Taller externo |  | 10 |
| Gastón Pedersen |  | 10 |
| Tomás Amato |  | 10 |
| Delgado Martín |  | 10 |
| Sector eléctrico |  | 10 |
| Gastón Alonso |  | 10 |
| Taller externo - Di Nezio |  | 10 |
| Taller externo - Dinezio |  | 10 |
| Hernandez Lucas |  | 10 |
| Gomis Jorge |  | 10 |
| Quinteros Juan Pablo |  | 10 |
| Hernandez Facundo |  | 10 |
| Ladreche Alejandro |  | 10 |
| o |  | 10 |

## Schedule

| ID | WBS | Task | Duration | Start | Finish | Predecessors | Complete | Remaining | Baseline start | Baseline finish | Baseline duration | Total slack | Free slack | Constraint | Resources | Work | Actual work | Cost | Baseline cost | Actual cost | Texto1 |
| --- | --- | --- | --- | --- | --- | --- | --- | --- | --- | --- | --- | --- | --- | --- | --- | --- | --- | --- | --- | --- | --- |
| 1 | 1 | **Motor SUPERIOR 16 SGT** | 14d | 2013-07-22 A | 2013-08-08 |  | 50% | 7d | 2013-07-22 | 2013-09-13 | 39.75d | 13d |  |  |  | 160h | 80h | 2,240 | 4,760 | 800 |  |
| 2 | 1.1 | **Etapa reparación / tareas en taller** | 10d | 2013-07-22 A | 2013-08-02 |  | 83% | 1.67d | 2013-07-22 | 2013-08-28 | 27.5d | 13d | 0d |  |  | 96h | 80h | 960 | 4,760 | 800 |  |
| 3 | 1.1.1 | Rectificado de eje de distribución | 2d | 2013-07-26 | 2013-07-29 |  |  |  | 2013-07-26 | 2013-07-29 | 2d | 17d |  | start no earlier than 2013-07-26 | Pollet Daniel | 16h |  | 160 | 160 |  | OT |
| 4 | 1.1.2 | Recitificado de eje de válvula de gas | 10d | 2013-07-22 A | 2013-08-02 A | 3 | 100% |  | 2013-07-30 | 2013-07-31 | 2d |  |  |  | Pollet Daniel | 80h | 80h | 800 | 160 | 800 | OT |
| 5 | 1.2 | **Etapa montaje / tareas en campo** | 4d | 2013-08-05 | 2013-08-08 | 2 |  |  | 2013-09-02 | 2013-09-13 | 9.25d | 13d |  |  |  | 64h |  | 1,280 |  |  |  |
| 6 | 1.5.4 | Conexión Instrumentación y contol / eléctrica | 4d | 2013-08-05 | 2013-08-08 |  |  |  | 2013-09-04 | 2013-09-10 | 4d | 13d | 0d |  | Bertelli Sebstian | 32h |  | 960 |  |  | OT |
| 7 | 1.5.5 | Conexión auxiliares mecánicos | 4d | 2013-08-05 | 2013-08-08 | 6SS |  |  | 2013-09-04 | 2013-09-10 | 4d | 13d |  |  | Gastón Alonso | 32h |  | 320 |  |  | OT |
| 8 | 2 | **Compresor SUPERIOR SW-64** | 27d | 2013-07-22 A | 2013-08-27 |  | 8% | 24.92d | 2013-07-22 | 2013-08-30 | 30d | 0d |  |  |  | 216h |  | 2,160 | 640 |  |  |
| 9 | 2.1 | Cilindros | 12d | 2013-07-22 A | 2013-08-06 |  | 25% | 9d | 2013-07-22 | 2013-08-02 | 10d | 15d |  |  |  |  |  |  | 560 |  |  |
| 10 | 2.2 | Remetalado de bielas | 27d | 2013-07-22 | 2013-08-27 |  |  |  | 2013-07-22 | 2013-08-27 | 27d | 0d |  |  | Taller externo | 216h |  | 2,160 |  |  | OT |
| 11 | 3 | **Puesta en marcha** | 1d | 2013-08-28 | 2013-08-28 | 8, 1 |  |  | 2013-09-13 | 2013-09-23 | 5.5d | 0d |  |  |  | 8h |  | 80 |  |  |  |
| 12 | 3.1 | Test de compresión | 0.5d | 2013-08-28 | 2013-08-28 |  |  |  | 2013-09-17 | 2013-09-17 | 0.5d | 0d |  |  | Marchesan Mariano | 4h |  | 40 |  |  | OT |
| 13 | 3.2 | Test de performance | 0.5d | 2013-08-28 | 2013-08-28 | 12 |  |  | 2013-09-17 | 2013-09-18 | 0.5d | 0d |  |  | Marchesan Mariano | 4h |  | 40 |  |  | OT |
| 14 | 4 | **Servicios de mantenimiento preventivo** | 59.25d | 2013-09-05 | 2013-11-27 | 11 |  |  | 2013-09-25 | 2013-12-17 | 59.25d | 0d |  |  |  |  |  |  |  |  |  |
| 15 | 4.1 | Asistencia de 120 hs marcha | 1.25d | 2013-09-05 | 2013-09-06 | 13FS+5d |  |  | 2013-09-25 | 2013-09-26 | 1.25d | 58d |  |  |  |  |  |  |  |  | OT |
| 16 | 4.2 | Asistencia de 1500 hs marcha | 1.25d | 2013-11-26 | 2013-11-27 | 13FS+63d |  |  | 2013-12-16 | 2013-12-17 | 1.25d | 0d |  |  |  |  |  |  |  |  | OT |

Notes:
- 1: Motor de 12 cilindros idéntico al L7042, pero con cilindros mas pequeños , e idem carrera. Peso equipo sin fluidos 10.300 Kgs.
- 9: 26/04 / Reemplazo esparragos tapa valvula. Rogel envia cantidad en estantería, faltantes los proveemos nosotros. / Mecanizado de cilindros.
